# PSC2-Transition

Schedule from MS Project XML, 2008-01-11 to 2008-02-29, A marks actual dates.

## Calendars

- Standard: Mon-Fri 08:00-12:00, 13:00-17:00; Sat-Sun off.

## Schedule

| ID | WBS | Task | Duration | Start | Predecessors | Complete | Remaining | Total slack | Constraint | Work |
| --- | --- | --- | --- | --- | --- | --- | --- | --- | --- | --- |
| 1 | 1 | **Pre-Transition** | 40h | 2008-01-11 A |  | 68% | 12.8h | 0d | start no earlier than 2008-01-11 | 80h |
| 2 | 1.1 | Introduce NOTIS & PSC teams | 40h | 2008-01-11 A |  | 66% | 13.6h | 0d |  | 40h |
| 3 | 1.2 | Identify adopters and contacts | 40h | 2008-01-11 A | 2FF | 70% | 12h | 0d |  | 40h |
| 4 | 2 | PSC 1.5 Release | 0h | 2008-01-18 A |  |  | 0h | 0d | start no earlier than 2008-01-18 |  |
| 5 | 3 | Assist non-NU adopters | 240h | 2008-01-18 A | 1 |  | 240h | 0d |  | 240h |
| 6 | 4 | **NU Adoption** | 240h | 2008-01-18 A | 1 |  | 240h | 0d |  | 360h |
| 7 | 4.1 | Setup new development environments | 40h | 2008-01-18 A |  |  | 40h | 0d |  | 40h |
| 8 | 4.2 | Security integration | 40h | 2008-01-25 A | 7 |  | 40h | 0d |  | 40h |
| 9 | 4.3 | **Integration of features** | 80h | 2008-02-01 A | 8 |  | 80h | 0d |  | 200h |
| 10 | 4.3.1 | Subject Coordinator features | 80h | 2008-02-01 A |  |  | 80h | 0d |  | 80h |
| 11 | 4.3.2 | Site Coordinator features | 80h | 2008-02-01 A |  |  | 80h | 0d |  | 80h |
| 12 | 4.3.3 | Management features | 40h | 2008-02-08 A | 11FF, 10FF |  | 40h | 0d |  | 40h |
| 13 | 4.4 | User training/testing | 80h | 2008-02-15 A | 9 |  | 80h | 0d |  | 80h |
| 14 | 5 | Bug fixes | 240h | 2008-01-18 A | 1 |  | 240h | 0d |  | 240h |
| 15 | 6 | PSC 2.0 Release | 0h | 2008-02-29 A |  |  | 0h | 0d | start no earlier than 2008-02-29 |  |

Notes:
- 2: Meetings to introduce software to each team and meet end users
- 3: Mayo, TJU, Arkansas, and Siouxland so far
- 5: TBD, we have travel budget if on-site becomes necessary
- 7: Need CFMX environments
- 8: Implement authentication from NU and authorization from PSC
