# PSC2-Transition

Schedule from MS Project XML, 2008-01-11 to 2008-02-29, A marks actual dates.

## Calendars

- Standard: Mon-Fri 08:00-12:00, 13:00-17:00; Sat-Sun off.

## Schedule

| ID | WBS | Task | Duration | Start | Predecessors | Complete | Remaining | Total slack | Constraint | Work |
| --- | --- | --- | --- | --- | --- | --- | --- | --- | --- | --- |
| 1 | 1 | **Pre-Transition** | 40h | 2008-01-11 A |  | 90% | 4h | 0d | start no earlier than 2008-01-11 | 80h |
| 2 | 1.1 | Introduce NOTIS & PSC teams | 40h | 2008-01-11 A |  | 100% | 0h | 0d |  | 40h |
| 3 | 1.2 | Identify adopters and contacts | 40h | 2008-01-11 A | 2FF | 80% | 8h | 0d |  | 40h |
| 4 | 2 | PSC 1.5 Release | 0h | 2008-01-18 A |  |  | 0h | 0d | start no earlier than 2008-01-18 |  |
| 5 | 3 | Assist non-NU adopters | 240h | 2008-01-18 A | 1 | 17% | 199.2h | 0d |  | 240h |
| 6 | 4 | **NU Adoption** | 227h | 2008-01-18 A | 1 | 21% | 178.97h | 0d |  | 444h |
| 7 | 4.1 | Setup new development environments | 40h | 2008-01-18 A |  | 100% | 0h | 0d |  | 40h |
| 8 | 4.2 | **Data integration** | 84h | 2008-01-25 A | 7 | 22% | 65.18h | 0d |  | 100h |
| 9 | 4.2.1 | What needs to be converted to PSC format? | 40h | 2008-01-25 A |  | 36% | 25.6h | 0d |  | 40h |
| 10 | 4.2.2 | Data conversion | 44h | 2008-02-01 A | 9 |  | 44h | 0d |  | 44h |
| 11 | 4.2.3 | Staging schema in Oracle | 8h | 2008-01-25 A |  | 100% | 0h | 0d |  | 8h |
| 12 | 4.2.4 | Production schema in Oracle | 8h | 2008-01-28 A | 11 |  | 8h | 0d |  | 8h |
| 13 | 4.3 | **Security integration** | 104h | 2008-01-25 A | 7 |  | 104h | 0d |  | 104h |
| 14 | 4.3.1 | Pluggable authentiction | 40h | 2008-01-25 A |  |  | 40h | 0d |  | 40h |
| 15 | 4.3.2 | Pluggable SSO | 40h | 2008-02-01 A | 14 |  | 40h | 0d |  | 40h |
| 16 | 4.3.3 | Authorization | 24h | 2008-02-08 A | 15 |  | 24h | 0d |  | 24h |
| 17 | 4.4 | **Interface integration** | 40h | 2008-02-01 A | 14 |  | 40h | 0d |  | 120h |
| 18 | 4.4.1 | Subject Coordinator features | 40h | 2008-02-01 A |  |  | 40h | 0d |  | 40h |
| 19 | 4.4.2 | Site Coordinator features | 40h | 2008-02-01 A |  |  | 40h | 0d |  | 40h |
| 20 | 4.4.3 | Management features | 40h | 2008-02-01 A | 18FF, 19FF |  | 40h | 0d |  | 40h |
| 21 | 4.5 | NU release 1.6 | 0h | 2008-02-13 A | 16 |  | 0h | 0d | start no earlier than 2008-02-13 |  |
| 22 | 4.6 | User Acceptance Testing | 40h | 2008-02-13 A | 17, 16 |  | 40h | 0d |  | 40h |
| 23 | 4.7 | NU release 1.7 | 0h | 2008-02-19 A | 22 |  | 0h | 0d |  |  |
| 24 | 4.8 | User Acceptance Testing 2 | 40h | 2008-02-20 A | 22 |  | 40h | 0d | start no earlier than 2008-02-20 | 40h |
| 25 | 5 | Bug fixes | 240h | 2008-01-18 A | 1 |  | 240h | 0d |  | 240h |
| 26 | 6 | PSC 2.0 Release | 0h | 2008-02-29 A |  |  | 0h | 0d | start no earlier than 2008-02-29 |  |

Notes:
- 2: Meetings to introduce software to each team and meet end users
- 3: Mayo, TJU, Arkansas, and Siouxland so far
- 5: TBD, we have travel budget if on-site becomes necessary
- 7: Need CFMX environments
- 13: Implement authentication from NU and authorization from PSC
