# PSC Phase II

Schedule from MS Project XML, 2007-06-01 to 2008-01-31, A marks actual dates.

## Resources

| Resource |
| --- |
| Sean |
| Nataliya |
| John |
| Anurag |
| Rhett |
| Ram |
| Saurabh |
| Dong |
| David |

## Schedule

| ID | WBS | Task | Duration | Start | Predecessors | Complete | Remaining | Total slack | Constraint | Resources | Work |
| --- | --- | --- | --- | --- | --- | --- | --- | --- | --- | --- | --- |
| 1 | 1 | **Elaboration** | 344h | 2007-06-01 A |  | 96% | 13.24h | 0d | start no earlier than 2007-06-01 |  | 824h |
| 2 | 1.1 | **Iteration 1** | 160h | 2007-06-01 A |  | 98% | 1.65h | 0d | must start on 2007-06-01 |  | 504h |
| 3 | 1.1.1 | **Infrastructure** | 66.67h | 2007-06-01 A |  | 100% | 0h | 0d |  |  | 120h |
| 4 | 1.1.1.1 | Continuous Integration Setup (Hudson) | 66.67h | 2007-06-01 A |  | 100% | 0h | 0d |  | Rhett [60%] | 40h |
| 5 | 1.1.1.2 | Test Coverage Tool (Emma) | 66.67h | 2007-06-01 A |  | 100% | 0h | 0d |  | Rhett [60%] | 40h |
| 6 | 1.1.1.3 | Automated Builds (Buildr) | 66.67h | 2007-06-01 A |  | 100% | 0h | 0d |  | Rhett [60%] | 40h |
| 7 | 1.1.2 | **Development** | 120h | 2007-06-08 A |  | 100% | 0h | 0d |  |  | 240h |
| 8 | 1.1.2.1 | User Provisioning | 120h | 2007-06-08 A |  | 100% | 0h | 0d | start no earlier than 2007-06-08 | John | 120h |
| 9 | 1.1.2.2 | Real-World Scheduling | 120h | 2007-06-08 A |  | 100% | 0h | 0d | start no earlier than 2007-06-08 | Nataliya | 120h |
| 10 | 1.1.3 | **Deliverables** | 152h | 2007-06-01 A |  | 95% | 6.34h | 0d |  |  | 144h |
| 11 | 1.1.3.1 | Vision and Scope 1.8 | 40h | 2007-06-01 A |  | 100% | 0h | 0d |  |  | 40h |
| 12 | 1.1.3.2 | PMP 1.1 | 32h | 2007-06-01 A |  | 100% | 0h | 0d |  |  | 32h |
| 13 | 1.1.3.3 | Communication Plan 1.2 | 8h | 2007-06-07 A | 12 | 100% | 0h | 0d |  |  | 8h |
| 14 | 1.1.3.4 | Cross-Cutting WS Project Kickoff 1.5 | 8h | 2007-06-15 A | 13, 11 | 100% | 0h | 0d | start no earlier than 2007-06-15 |  | 8h |
| 15 | 1.1.3.5 | Use Case Doc 2.1 | 8h | 2007-06-25 A | 14 | 90% | 0.8h | 0d | start no earlier than 2007-06-25 |  | 8h |
| 16 | 1.1.3.6 | SRS 2.2 | 8h | 2007-06-25 A | 15FF | 90% | 0.8h | 0d |  |  | 8h |
| 17 | 1.1.3.7 | UML 2.3 | 8h | 2007-06-25 A | 16FF | 90% | 0.8h | 0d |  |  | 8h |
| 18 | 1.1.3.8 | Design Docs 2.4 | 8h | 2007-06-26 A | 17 | 75% | 2h | 0d |  |  | 8h |
| 19 | 1.1.3.9 | Test Plan 2.6 | 8h | 2007-06-26 A | 18FF | 90% | 0.8h | 0d |  |  | 8h |
| 20 | 1.1.3.10 | Test Results Report 2.7 | 8h | 2007-06-27 A | 19 | 90% | 0.8h | 0d |  |  | 8h |
| 21 | 1.1.3.11 | Monthly Status Report 1.3 | 8h | 2007-06-27 A | 20FF | 100% | 0h | 0d |  |  | 8h |
| 22 | 1.2 | **Iteration 2** | 176h | 2007-07-01 A | 2 | 91% | 15.84h | 0d | must start on 2007-07-01 |  | 320h |
| 23 | 1.2.1 | **Deliverables** | 96h | 2007-07-14 A |  | 82% | 17.28h | 0d |  |  | 160h |
| 24 | 1.2.1.1 | Use Case Doc 2.1 | 16h | 2007-07-14 A |  | 80% | 3.2h | 0d | start no earlier than 2007-07-14 |  | 16h |
| 25 | 1.2.1.2 | SRS 2.2 | 16h | 2007-07-16 A | 24FF | 90% | 1.6h | 0d |  |  | 16h |
| 26 | 1.2.1.3 | UML 2.3 | 16h | 2007-07-16 A | 25FF | 90% | 1.6h | 0d | must start on 2007-07-16 |  | 16h |
| 27 | 1.2.1.4 | Design Docs 2.4 | 16h | 2007-07-18 A | 26 | 70% | 4.8h | 0d |  |  | 16h |
| 28 | 1.2.1.5 | Technical Architecture Guide 2.8 | 16h | 2007-07-20 A | 27 | 90% | 1.6h | 0d |  |  | 16h |
| 29 | 1.2.1.6 | Prototype Code 2.5 | 16h | 2007-07-24 A | 28 | 90% | 1.6h | 0d |  |  | 16h |
| 30 | 1.2.1.7 | Test Plan 2.6 | 16h | 2007-07-24 A | 29FF | 90% | 1.6h | 0d |  |  | 16h |
| 31 | 1.2.1.8 | Test Results Report 2.7 | 16h | 2007-07-26 A | 30 | 90% | 1.6h | 0d |  |  | 16h |
| 32 | 1.2.1.9 | Construction & Transition Phase Plan 2.9 | 32h | 2007-07-26 A | 29 | 65% | 11.2h | 0d |  |  | 32h |

| ID | WBS | Task | Duration | Start | Predecessors | Complete | Remaining | Total slack | Constraint | Resources | Work |
| --- | --- | --- | --- | --- | --- | --- | --- | --- | --- | --- | --- |
| 33 | 1.2.2 | **Development** | 96h | 2007-07-02 A |  | 100% | 0h | 0d |  |  | 160h |
| 34 | 1.2.2.1 | Group Scheduled Events | 40h | 2007-07-02 A |  | 100% | 0h | 0d |  | John | 40h |
| 35 | 1.2.2.2 | Collapse days in template | 40h | 2007-07-11 A |  | 100% | 0h | 0d | start no earlier than 2007-07-11 | Anurag | 40h |
| 36 | 1.2.2.3 | Use AJAX in ManagePeriods interface | 40h | 2007-07-02 A |  | 100% | 0h | 0d |  | Nataliya | 40h |
| 37 | 1.2.2.4 | Add ConditionalEvents to Template | 40h | 2007-07-09 A | 36FF | 100% | 0h | 0d | start no earlier than 2007-07-09 | Nataliya | 40h |
| 38 | 2 | **Construction** | 912h | 2007-08-01 A | 1 |  | 912h | 0d | must start on 2007-08-01 |  | 2067.2h |
| 39 | 2.1 | **Release 1** | 256h | 2007-08-01 A |  |  | 256h | 0d | must start on 2007-08-01 |  | 841.6h |
| 40 | 2.1.1 | **Development** | 256h | 2007-08-01 A |  |  | 256h | 0d |  |  | 505.6h |
| 41 | 2.1.1.1 | Look and Feel | 64h | 2007-08-01 A |  |  | 64h | 0d |  | John; Nataliya | 128h |
| 42 | 2.1.1.2 | Security | 128h | 2007-08-13 A | 41 |  | 128h | 0d |  | John | 128h |
| 43 | 2.1.1.3 | Amendments | 256h | 2007-08-01 A |  |  | 256h | 0d |  | Rhett [60%] | 153.6h |
| 44 | 2.1.1.4 | Schedule Conditional Events | 96h | 2007-08-13 A | 41 |  | 96h | 0d |  | Nataliya | 96h |
| 45 | 2.1.2 | **Requirements** | 160h | 2007-08-01 A |  |  | 160h | 0d |  |  | 120h |
| 46 | 2.1.2.1 | Repetitions of cycles | 53.33h | 2007-08-01 A |  |  | 53.33h | 0d |  | Sean [75%] | 40h |
| 47 | 2.1.2.2 | Adoption scenarios | 53.33h | 2007-08-09 A | 46 |  | 53.33h | 0d |  | Sean [75%] | 40h |
| 48 | 2.1.2.3 | TDM Harmonization | 53.33h | 2007-08-20 A | 47 |  | 53.33h | 0d |  | Sean [75%] | 40h |
| 49 | 2.1.3 | UAT | 80h | 2007-08-07 A |  |  | 80h | 0d | start no earlier than 2007-08-07 | David | 80h |
| 50 | 2.1.4 | **Deliverables** | 80h | 2007-08-28 A |  |  | 80h | 0d |  |  | 136h |
| 51 | 2.1.4.1 | Use Case Doc 3.1 | 10.67h | 2007-08-29 A | 48 |  | 10.67h | 0d |  | Sean [75%] | 8h |
| 52 | 2.1.4.2 | SRS Doc 3.2 | 10.67h | 2007-08-29 A | 51FF |  | 10.67h | 0d |  | Sean [75%] | 8h |
| 53 | 2.1.4.3 | UML 3.3 | 13.33h | 2007-08-28 A | 52FF |  | 13.33h | 0d |  | Rhett [60%] | 8h |
| 54 | 2.1.4.4 | Design Docs 3.4 | 4h | 2007-09-03 A | 53, 42FF, 44FF |  | 4h | 0d |  | John; Nataliya | 8h |
| 55 | 2.1.4.5 | Code 3.5 | 13.33h | 2007-09-04 A | 54 |  | 13.33h | 0d |  | Rhett [60%] | 8h |
| 56 | 2.1.4.6 | Release Notes 3.14 | 10.67h | 2007-09-05 A | 55 |  | 10.67h | 0d |  | Sean [75%] | 8h |
| 57 | 2.1.4.7 | Test Plan 3.6 | 10.67h | 2007-09-05 A | 56FF |  | 10.67h | 0d |  | Sean [75%] | 8h |
| 58 | 2.1.4.8 | Data Sets 3.7 | 13.71h | 2007-09-07 A | 57 |  | 13.71h | 0d |  | David; Sean [75%] | 24h |
| 59 | 2.1.4.9 | Test Results Report 3.8 | 5.93h | 2007-09-07 A | 58FF |  | 5.93h | 0d |  | Rhett [60%]; Sean [75%] | 8h |
| 60 | 2.1.4.10 | Technical/Architecture Guide 3.9 | 8h | 2007-09-05 A | 55 |  | 8h | 0d |  | John | 8h |
| 61 | 2.1.4.11 | Installation Guide 3.10 | 8h | 2007-09-05 A | 55 |  | 8h | 0d |  | John | 8h |
| 62 | 2.1.4.12 | Administration Guide 3.13 | 32h | 2007-09-05 A | 55 |  | 32h | 0d |  | Nataliya | 32h |

| ID | WBS | Task | Duration | Start | Predecessors | Remaining | Total slack | Constraint | Resources | Work |
| --- | --- | --- | --- | --- | --- | --- | --- | --- | --- | --- |
| 63 | 2.2 | **Release 2** | 216h | 2007-09-14 A | 39 | 216h | 0d | must start on 2007-09-14 |  | 697.6h |
| 64 | 2.2.1 | **Development** | 216h | 2007-09-14 A |  | 216h | 0d |  |  | 489.6h |
| 65 | 2.2.1.1 | Export Templates | 133.33h | 2007-09-14 A |  | 133.33h | 0d |  | Rhett [60%] | 80h |
| 66 | 2.2.1.2 | Import Templates | 82.67h | 2007-10-08 A | 65 | 82.67h | 0d |  | Rhett [60%] | 49.6h |
| 67 | 2.2.1.3 | Export Calendars in standard format | 80h | 2007-09-14 A |  | 80h | 0d |  | Nataliya | 80h |
| 68 | 2.2.1.4 | Expand APIs | 200h | 2007-09-14 A |  | 200h | 0d |  | John | 200h |
| 69 | 2.2.1.5 | **Create groups of activities** | 80h | 2007-10-03 A |  | 80h | 0d |  |  | 80h |
| 70 | 2.2.1.5.1 | Create groups of activities | 40h | 2007-10-03 A | 73 | 40h | 0d |  | Nataliya | 40h |
| 71 | 2.2.1.5.2 | Save groups of activities | 40h | 2007-10-10 A | 70 | 40h | 0d |  | Nataliya | 40h |
| 72 | 2.2.2 | **Requirements** | 106.67h | 2007-09-14 A |  | 106.67h | 0d |  |  | 80h |
| 73 | 2.2.2.1 | Grouping activities | 106.67h | 2007-09-14 A |  | 106.67h | 0d |  | Sean [75%] | 80h |
| 74 | 2.2.3 | **Deliverables** | 64h | 2007-10-02 A |  | 64h | 0d |  |  | 128h |
| 75 | 2.2.3.1 | Use Case Doc 3.1 | 10.67h | 2007-10-03 A | 73 | 10.67h | 0d |  | Sean [75%] | 8h |
| 76 | 2.2.3.2 | SRS Doc 3.2 | 10.67h | 2007-10-03 A | 75FF | 10.67h | 0d |  | Sean [75%] | 8h |
| 77 | 2.2.3.3 | UML 3.3 | 13.33h | 2007-10-02 A | 76FF | 13.33h | 0d |  | Rhett [60%] | 8h |
| 78 | 2.2.3.4 | Design Docs 3.4 | 16h | 2007-10-04 A | 77 | 16h | 0d |  | John; Nataliya | 32h |
| 79 | 2.2.3.5 | Code 3.5 | 26.67h | 2007-10-08 A | 78, 82 | 26.67h | 0d |  | Rhett [60%] | 16h |
| 80 | 2.2.3.6 | Release Notes 3.14 | 5.93h | 2007-10-11 A | 79 | 5.93h | 0d |  | Sean [75%]; Rhett [60%] | 8h |
| 81 | 2.2.3.7 | Test Plan 3.6 | 10.67h | 2007-10-04 A | 77 | 10.67h | 0d |  | Sean [75%] | 8h |
| 82 | 2.2.3.8 | Data Sets 3.7 | 8h | 2007-10-04 A | 81FF | 8h | 0d |  | David | 8h |
| 83 | 2.2.3.9 | Test Results Report 3.8 | 4.57h | 2007-10-05 A | 81 | 4.57h | 0d |  | Sean [75%]; John | 8h |
| 84 | 2.2.3.10 | Technical/Architecture Guide 3.9 | 8h | 2007-10-11 A | 79 | 8h | 0d |  | John | 8h |
| 85 | 2.2.3.11 | Installation Guide 3.10 | 10.67h | 2007-10-11 A | 80FF | 10.67h | 0d |  | Sean [75%] | 8h |
| 86 | 2.2.3.12 | Administration Guide 3.13 | 8h | 2007-10-11 A | 80FF | 8h | 0d |  | Nataliya | 8h |

| ID | WBS | Task | Duration | Start | Predecessors | Remaining | Total slack | Constraint | Work |
| --- | --- | --- | --- | --- | --- | --- | --- | --- | --- |
| 87 | 2.3 | **Release 3** | 160h | 2007-10-25 A | 63 | 160h | 0d | must start on 2007-10-25 | 384h |
| 88 | 2.3.1 | **Customized views of data** | 160h | 2007-10-25 A |  | 160h | 0d |  | 280h |
| 89 | 2.3.1.1 | Patient Coordinator View | 80h | 2007-10-25 A |  | 80h | 0d |  | 80h |
| 90 | 2.3.1.2 | Patient View | 40h | 2007-11-08 A | 89 | 40h | 0d |  | 40h |
| 91 | 2.3.1.3 | Manager of Patient Coordinators View | 80h | 2007-10-25 A |  | 80h | 0d |  | 80h |
| 92 | 2.3.1.4 | PI View | 80h | 2007-11-08 A | 91 | 80h | 0d |  | 80h |
| 93 | 2.3.2 | **Deliverables** | 16h | 2007-10-25 A |  | 16h | 0d |  | 104h |
| 94 | 2.3.2.1 | Use Case Doc 3.1 | 8h | 2007-10-25 A |  | 8h | 0d |  | 8h |
| 95 | 2.3.2.2 | SRS Doc 3.2 | 8h | 2007-10-25 A |  | 8h | 0d |  | 8h |
| 96 | 2.3.2.3 | UML 3.3 | 8h | 2007-10-25 A |  | 8h | 0d |  | 8h |
| 97 | 2.3.2.4 | Design Docs 3.4 | 8h | 2007-10-25 A |  | 8h | 0d |  | 8h |
| 98 | 2.3.2.5 | Code 3.5 | 8h | 2007-10-25 A |  | 8h | 0d |  | 8h |
| 99 | 2.3.2.6 | Release Notes 3.14 | 8h | 2007-10-26 A | 98 | 8h | 0d |  | 8h |
| 100 | 2.3.2.7 | Test Plan 3.6 | 8h | 2007-10-25 A |  | 8h | 0d |  | 8h |
| 101 | 2.3.2.8 | Data Sets 3.7 | 8h | 2007-10-25 A |  | 8h | 0d |  | 8h |
| 102 | 2.3.2.9 | Test Results Report 3.8 | 8h | 2007-10-25 A |  | 8h | 0d |  | 8h |
| 103 | 2.3.2.10 | Technical/Architecture Guide 3.9 | 8h | 2007-10-25 A |  | 8h | 0d |  | 8h |
| 104 | 2.3.2.11 | Installation Guide 3.10 | 8h | 2007-10-25 A |  | 8h | 0d |  | 8h |
| 105 | 2.3.2.12 | Administration Guide 3.13 | 8h | 2007-10-25 A |  | 8h | 0d |  | 8h |
| 106 | 2.3.2.13 | Draft End User Guide 3.15.1 | 8h | 2007-10-25 A |  | 8h | 0d |  | 8h |
| 107 | 2.4 | **Release 4** | 184h | 2007-12-06 A | 87 | 184h | 0d | must start on 2007-12-06 | 144h |
| 108 | 2.4.1 | **Deliverables** | 184h | 2007-12-06 A |  | 184h | 0d |  | 144h |
| 109 | 2.4.1.1 | Use Case Doc 3.1 | 8h | 2007-12-06 A |  | 8h | 0d |  | 8h |
| 110 | 2.4.1.2 | SRS Doc 3.2 | 8h | 2007-12-06 A |  | 8h | 0d |  | 8h |
| 111 | 2.4.1.3 | UML 3.3 | 8h | 2007-12-06 A |  | 8h | 0d |  | 8h |
| 112 | 2.4.1.4 | Design Docs 3.4 | 8h | 2007-12-06 A |  | 8h | 0d |  | 8h |
| 113 | 2.4.1.5 | Code 3.5 | 8h | 2007-12-06 A |  | 8h | 0d |  | 8h |
| 114 | 2.4.1.6 | Release Notes 3.14 | 8h | 2007-12-07 A | 113 | 8h | 0d |  | 8h |
| 115 | 2.4.1.7 | Test Plan 3.6 | 8h | 2007-12-06 A |  | 8h | 0d |  | 8h |
| 116 | 2.4.1.8 | Data Sets 3.7 | 8h | 2007-12-06 A |  | 8h | 0d |  | 8h |
| 117 | 2.4.1.9 | Test Results Report 3.8 | 8h | 2007-12-06 A |  | 8h | 0d |  | 8h |
| 118 | 2.4.1.10 | Technical/Architecture Guide 3.9 | 8h | 2007-12-06 A |  | 8h | 0d |  | 8h |
| 119 | 2.4.1.11 | Installation Guide 3.10 | 8h | 2007-12-06 A |  | 8h | 0d |  | 8h |
| 120 | 2.4.1.12 | Administration Guide 3.13 | 8h | 2007-12-06 A |  | 8h | 0d |  | 8h |
| 121 | 2.4.1.13 | Complete Semantically .. XMI File 3.11.1 | 8h | 2007-12-19 A |  | 8h | 0d | must finish on 2007-12-19 | 8h |
| 122 | 2.4.1.14 | Full CDE Use Report 3.11.2 | 8h | 2008-01-04 A | 121 | 8h | 0d | must start on 2008-01-04 | 8h |
| 123 | 2.4.1.15 | Compatibility Review Submission 3.12 | 8h | 2008-01-07 A | 122 | 8h | 0d |  | 8h |
| 124 | 2.4.1.16 | Final End User Guide 3.15.2 | 8h | 2007-12-06 A |  | 8h | 0d |  | 8h |
| 125 | 2.4.1.17 | Detailed Transition Phase Plan 3.16 | 8h | 2007-12-06 A |  | 8h | 0d |  | 8h |
| 126 | 2.4.1.18 | Draft Training Materials 5.1.1 | 8h | 2007-12-06 A |  | 8h | 0d |  | 8h |

| ID | WBS | Task | Duration | Start | Predecessors | Remaining | Total slack | Constraint | Work |
| --- | --- | --- | --- | --- | --- | --- | --- | --- | --- |
| 127 | 3 | **Transition** | 240h | 2008-01-18 A | 38 | 240h | 0d | must start on 2008-01-18 | 240h |
| 128 | 3.1 | **Deliverables** | 168h | 2008-01-31 A |  | 168h | 0d | start no earlier than 2008-01-31 | 240h |
| 129 | 3.1.1 | Lessons Learned 1.6 | 168h | 2008-01-31 A |  | 168h | 0d |  | 168h |
| 130 | 3.1.2 | Adoption Collaboration Report 1.7 | 8h | 2008-01-31 A |  | 8h | 0d |  | 8h |
| 131 | 3.1.3 | Final Training Materials 5.1.2 | 8h | 2008-01-31 A |  | 8h | 0d |  | 8h |
| 132 | 3.1.4 | Finalized Deployment Plan 4.1 | 8h | 2008-01-31 A |  | 8h | 0d |  | 8h |
| 133 | 3.1.5 | Fully Operational CCB .. documentation 4.2 | 8h | 2008-01-31 A |  | 8h | 0d |  | 8h |
| 134 | 3.1.6 | Deployment report for each org 4.3 | 8h | 2008-01-31 A |  | 8h | 0d |  | 8h |
| 135 | 3.1.7 | Code releases 4.4 | 8h | 2008-01-31 A |  | 8h | 0d |  | 8h |
| 136 | 3.1.8 | Data Access Plan 5.2.1 | 8h | 2008-01-31 A |  | 8h | 0d |  | 8h |
| 137 | 3.1.9 | Links to Data 5.2.2 | 8h | 2008-01-31 A |  | 8h | 0d |  | 8h |
| 138 | 3.1.10 | Data Loaded into Final PSC Phase II Implementation 5.3 | 8h | 2008-01-31 A |  | 8h | 0d |  | 8h |
